# Proyecto AgroAgil

Schedule from MS Project, 2023-05-15 to 2023-11-21.

## Calendars

- Estándar: Mon-Fri 09:00-13:00, 15:00-19:00; Sat-Sun off.

## Resources

| Resource |
| --- |
| Lourdes Gonzalez |
| Marisol Cervantes |
| Chiara Mazzarella |
| Gabriel Iakantas |
| Jhon Olmedo |

## Schedule

| ID | WBS | Task | Type | Duration | Start | Finish | Predecessors | Total slack | Free slack | Constraint | Resources | Work |
| --- | --- | --- | --- | --- | --- | --- | --- | --- | --- | --- | --- | --- |
| 1 | 1 | **Desarrollo de un sistema de gestión para pequeños productores agrícolas** |  | 136.5d | 2023-05-15 | 2023-11-21 |  | 0d |  |  |  | 5122h |
| 2 | 1.1 | **Fase 0 (Gestión de proyecto)** |  | 122d | 2023-05-15 | 2023-10-31 |  | 0d |  |  |  | 664h |
| 3 | 1.1.1 | Realizar Estudio de Factibilidad |  | 24h | 2023-05-15 | 2023-05-17 |  | 0d |  | start no earlier than 2023-05-15 | Lourdes Gonzalez; Gabriel Iakantas | 48h |
| 4 | 1.1.2 | Realizar Business Model Canvas |  | 6h | 2023-05-18 | 2023-05-18 | 3 | 3d | 0d |  | Lourdes Gonzalez; Gabriel Iakantas | 12h |
| 5 | 1.1.3 | Realizar WBS |  | 6h | 2023-05-18 | 2023-05-18 | 3 | 3d | 0d |  | Chiara Mazzarella; Gabriel Iakantas; Jhon Olmedo; Lourdes Gonzalez; Marisol Cervantes | 30h |
| 6 | 1.1.4 | Realizar Documento de Habilidades y Competencias |  | 6h | 2023-05-18 | 2023-05-18 | 3 | 0d |  |  | Gabriel Iakantas; Lourdes Gonzalez | 12h |
| 7 | 1.1.5 | Realizar Documento de Roles y Responsabilidades |  | 6h | 2023-05-18 | 2023-05-19 | 6 | 0d |  |  | Lourdes Gonzalez; Gabriel Iakantas | 12h |
| 8 | 1.1.6 | Realizar Matriz de Comunicaciones |  | 6h | 2023-05-19 | 2023-05-22 | 7 | 131.25d | 0d |  | Gabriel Iakantas; Lourdes Gonzalez | 12h |
| 9 | 1.1.7 | Realizar Documento de Estimación de Costos |  | 12h | 2023-05-19 | 2023-05-22 | 7 | 0d |  |  | Lourdes Gonzalez; Gabriel Iakantas | 24h |
| 10 | 1.1.8 | Realizar Documento de Gestión de Riesgos |  | 6h | 2023-05-23 | 2023-05-23 | 9 | 0d |  |  | Chiara Mazzarella; Gabriel Iakantas; Jhon Olmedo; Lourdes Gonzalez; Marisol Cervantes | 30h |
| 11 | 1.1.9 | Realizar Acta del proyecto |  | 12h | 2023-05-23 | 2023-05-25 | 9, 10, 7, 4, 5 | 0d |  |  | Lourdes Gonzalez; Gabriel Iakantas | 24h |
| 12 | 1.1.10 | Realizar Documento de Release Plan |  | 24h | 2023-05-25 | 2023-05-30 | 11, 7 | 6.75d | 0d |  | Marisol Cervantes; Chiara Mazzarella; Gabriel Iakantas; Jhon Olmedo; Lourdes Gonzalez | 120h |
| 13 | 1.1.11 | Realizar Documentación Requerida por el Concurso de Ideas del INTA |  | 24h | 2023-09-21 | 2023-09-25 |  | 37.5d | 0d | start no earlier than 2023-09-21 | Marisol Cervantes; Chiara Mazzarella; Gabriel Iakantas; Jhon Olmedo; Lourdes Gonzalez | 120h |
| 14 | 1.1.12 | Realizar los Videos solicitados por el Concurso de Ideas del INTA |  | 24h | 2023-09-26 | 2023-09-28 | 13 | 37.5d | 0d |  | Marisol Cervantes; Chiara Mazzarella; Gabriel Iakantas; Jhon Olmedo; Lourdes Gonzalez | 120h |
| 15 | 1.1.13 | Elaborar Presentación para CoNaIISI 2023 |  | 8h | 2023-10-31 | 2023-10-31 |  | 14.5d | 0d | start no earlier than 2023-10-31 | Marisol Cervantes; Chiara Mazzarella; Gabriel Iakantas; Jhon Olmedo; Lourdes Gonzalez | 40h |
| 16 | 1.1.14 | Realizar Informe de Avances |  | 12h | 2023-05-30 | 2023-05-31 | 11, 12 | 6.75d | 0d |  | Lourdes Gonzalez; Chiara Mazzarella; Gabriel Iakantas; Jhon Olmedo; Marisol Cervantes | 60h |
| 17 | 1.2 | (E) Documento de Estimación de Costos aprobado | milestone | 0d | 2023-05-22 | 2023-05-22 | 9 | 130.5d |  |  | Lourdes Gonzalez; Gabriel Iakantas |  |
| 18 | 1.3 | (E) Documento de Habilidades y Competencias aprobado | milestone | 0d | 2023-05-18 | 2023-05-18 | 6 | 132.75d |  |  | Lourdes Gonzalez; Gabriel Iakantas |  |
| 19 | 1.4 | (E) Documento de Roles y Responsabilidades aprobado | milestone | 0d | 2023-05-19 | 2023-05-19 | 7 | 132d |  |  | Lourdes Gonzalez; Gabriel Iakantas |  |
| 20 | 1.5 | (E) Matriz de Comunicaciones aprobada | milestone | 0d | 2023-05-22 | 2023-05-22 | 8 | 131.25d |  |  | Lourdes Gonzalez; Gabriel Iakantas |  |
| 21 | 1.6 | (E) WBS aprobada | milestone | 0d | 2023-05-18 | 2023-05-18 | 5 | 132.75d |  |  | Lourdes Gonzalez; Chiara Mazzarella; Gabriel Iakantas; Jhon Olmedo; Marisol Cervantes |  |
| 22 | 1.7 | (E) Documento de Gestión de Riesgos aprobado | milestone | 0d | 2023-05-23 | 2023-05-23 | 10 | 129.75d |  |  | Chiara Mazzarella; Gabriel Iakantas; Jhon Olmedo; Lourdes Gonzalez; Marisol Cervantes |  |
| 23 | 1.8 | (E) Business Model Canvas aprobado | milestone | 0d | 2023-05-18 | 2023-05-18 | 4 | 132.75d |  |  | Lourdes Gonzalez; Gabriel Iakantas |  |
| 24 | 1.9 | (E) Estudio de Factibilidad aprobado | milestone | 0d | 2023-05-17 | 2023-05-17 | 3 | 133.5d |  |  | Lourdes Gonzalez; Gabriel Iakantas |  |
| 25 | 1.10 | (E) Acta de Proyecto aprobada | milestone | 0d | 2023-05-25 | 2023-05-25 | 11 | 128.25d |  |  | Lourdes Gonzalez; Gabriel Iakantas |  |
| 26 | 1.11 | (E) Documento de Release Plan aprobado | milestone | 0d | 2023-05-30 | 2023-05-30 | 12 | 125.25d |  |  | Lourdes Gonzalez; Chiara Mazzarella; Gabriel Iakantas; Jhon Olmedo; Marisol Cervantes |  |
| 27 | 1.12 | (E) Informe de Avances aprobado | milestone | 0d | 2023-05-31 | 2023-05-31 | 16 | 123.75d |  |  | Lourdes Gonzalez; Chiara Mazzarella; Gabriel Iakantas; Jhon Olmedo; Marisol Cervantes |  |
| 28 | 1.13 | (E) Documento para el Concurso de Ideas del INTA entregado | milestone | 0d | 2023-09-25 | 2023-09-25 | 13 | 40.5d |  |  | Lourdes Gonzalez; Chiara Mazzarella; Gabriel Iakantas; Jhon Olmedo; Marisol Cervantes |  |
| 29 | 1.14 | (E) Videos para el Concurso de Ideas de INTA entregados | milestone | 0d | 2023-09-28 | 2023-09-28 | 14 | 37.5d |  |  | Lourdes Gonzalez; Chiara Mazzarella; Gabriel Iakantas; Jhon Olmedo; Marisol Cervantes |  |
| 30 | 1.15 | (E) Presentación para CoNaIISI 2023 finalizada | milestone | 0d | 2023-10-31 | 2023-10-31 | 15 | 14.5d |  |  | Lourdes Gonzalez; Chiara Mazzarella; Gabriel Iakantas; Jhon Olmedo; Marisol Cervantes |  |

| ID | WBS | Task | Type | Duration | Start | Finish | Predecessors | Total slack | Free slack | Constraint | Resources | Work |
| --- | --- | --- | --- | --- | --- | --- | --- | --- | --- | --- | --- | --- |
| 31 | 1.16 | **Fase 1 (Análisis)** |  | 12.5d | 2023-05-25 | 2023-06-12 |  | 0d |  |  |  | 264h |
| 32 | 1.16.1 | Elaborar Documento de Definición de Perfil de Usuarios |  | 18h | 2023-05-25 | 2023-05-29 | 11 | 0d |  |  | Gabriel Iakantas; Lourdes Gonzalez | 36h |
| 33 | 1.16.2 | Elaborar Historias de Usuario |  | 24h | 2023-05-29 | 2023-06-05 | 32 | 0d |  |  | Gabriel Iakantas; Lourdes Gonzalez; Marisol Cervantes | 72h |
| 34 | 1.16.3 | Elaborar Product Backlog |  | 12h | 2023-06-05 | 2023-06-07 | 33 | 4.5d | 0d |  | Gabriel Iakantas; Lourdes Gonzalez; Marisol Cervantes | 36h |
| 35 | 1.16.4 | Elaborar Documento de Entrevistas |  | 18h | 2023-05-31 | 2023-06-02 | 16 | 6.75d | 0d |  | Gabriel Iakantas; Lourdes Gonzalez | 36h |
| 36 | 1.16.5 | Elaborar Story Mapping |  | 4h | 2023-06-07 | 2023-06-07 | 34 | 115.75d | 0d |  | Gabriel Iakantas; Lourdes Gonzalez; Marisol Cervantes | 12h |
| 37 | 1.16.6 | Elaborar Informe de Avances |  | 24h | 2023-06-07 | 2023-06-12 | 36 | 115.75d | 0d |  | Gabriel Iakantas; Marisol Cervantes; Lourdes Gonzalez | 72h |
| 38 | 1.17 | (E) Product Backlog aprobado | milestone | 0d | 2023-06-07 | 2023-06-07 | 34 | 119.25d |  |  | Gabriel Iakantas; Lourdes Gonzalez; Marisol Cervantes |  |
| 39 | 1.18 | (E) Documento de Definición de Perfil de Usuarios aprobado | milestone | 0d | 2023-05-29 | 2023-05-29 | 32 | 126d |  |  | Gabriel Iakantas; Lourdes Gonzalez |  |
| 40 | 1.19 | (E) Documento de Entrevistas aprobado | milestone | 0d | 2023-06-02 | 2023-06-02 | 35 | 121.5d |  |  | Gabriel Iakantas; Lourdes Gonzalez |  |
| 41 | 1.20 | (E) Story Mapping aprobado | milestone | 0d | 2023-06-07 | 2023-06-07 | 36 | 118.75d |  |  | Gabriel Iakantas; Lourdes Gonzalez; Marisol Cervantes |  |
| 42 | 1.21 | (E) Historias de Usuario aprobadas | milestone | 0d | 2023-06-05 | 2023-06-05 | 33 | 120.75d |  |  | Gabriel Iakantas; Lourdes Gonzalez; Marisol Cervantes |  |
| 43 | 1.22 | (E) Informe de Avances aprobado | milestone | 0d | 2023-06-12 | 2023-06-12 | 37 | 115.75d |  |  | Gabriel Iakantas; Lourdes Gonzalez; Marisol Cervantes |  |
| 44 | 1.23 | **Fase 2 (Diseño)** |  | 52.25d | 2023-06-05 | 2023-08-16 |  | 0d |  |  |  | 928h |
| 45 | 1.23.1 | Elaborar Documento de Esquema de Datos en Firebase |  | 24h | 2023-06-08 | 2023-06-12 | 34, 35, 50 | 112.5d | 0d |  | Jhon Olmedo; Marisol Cervantes; Chiara Mazzarella; Gabriel Iakantas; Lourdes Gonzalez | 120h |
| 46 | 1.23.2 | Elaborar Diagrama de clases |  | 24h | 2023-06-08 | 2023-06-12 | 34, 35, 50 | 112.5d | 0d |  | Jhon Olmedo; Chiara Mazzarella; Gabriel Iakantas; Lourdes Gonzalez; Marisol Cervantes | 120h |
| 47 | 1.23.3 | Elaborar Paper para CoNaIISI |  | 48h | 2023-07-24 | 2023-07-31 |  | 80.5d | 0d | start no earlier than 2023-07-24 | Lourdes Gonzalez; Gabriel Iakantas | 96h |
| 48 | 1.23.4 | Elaborar Presentacion comercial |  | 56h | 2023-08-08 | 2023-08-16 |  | 68.5d | 0d | start no earlier than 2023-08-08 | Lourdes Gonzalez; Gabriel Iakantas | 112h |
| 49 | 1.23.5 | Elaborar Poster version A3 |  | 24h | 2023-08-10 | 2023-08-14 |  | 70.5d | 0d | start no earlier than 2023-08-10 | Lourdes Gonzalez; Gabriel Iakantas | 48h |
| 50 | 1.23.6 | Elaborar Documento de Arquitectura |  | 18h | 2023-06-05 | 2023-06-07 | 33 | 3.75d | 0d |  | Chiara Mazzarella; Gabriel Iakantas; Jhon Olmedo; Marisol Cervantes | 72h |
| 51 | 1.23.7 | Elaborar Prototipo de Interfaz de usuario |  | 48h | 2023-06-05 | 2023-06-13 | 33 | 0d |  |  | Chiara Mazzarella; Gabriel Iakantas; Jhon Olmedo; Lourdes Gonzalez; Marisol Cervantes | 240h |
| 52 | 1.23.8 | Elaborar Informe de Avances |  | 24h | 2023-06-13 | 2023-06-16 | 51, 45, 46 | 111.75d | 0d |  | Chiara Mazzarella; Gabriel Iakantas; Jhon Olmedo; Lourdes Gonzalez; Marisol Cervantes | 120h |
| 53 | 1.24 | (E) Documento de Esquema de Datos aprobado | milestone | 0d | 2023-06-12 | 2023-06-12 | 45 | 115.5d |  |  | Chiara Mazzarella; Marisol Cervantes; Lourdes Gonzalez; Jhon Olmedo; Gabriel Iakantas |  |
| 54 | 1.25 | (E) Diagrama de Clases aprobado | milestone | 0d | 2023-06-12 | 2023-06-12 | 46 | 115.5d |  |  | Chiara Mazzarella; Marisol Cervantes; Lourdes Gonzalez; Jhon Olmedo; Gabriel Iakantas |  |
| 55 | 1.26 | (E) Paper para CoNaIISI aprobado | milestone | 0d | 2023-07-31 | 2023-07-31 | 47 | 80.5d |  |  | Gabriel Iakantas; Lourdes Gonzalez |  |
| 56 | 1.27 | (E) Presentacion comercial aprobada | milestone | 0d | 2023-08-16 | 2023-08-16 | 48 | 68.5d |  |  | Gabriel Iakantas; Lourdes Gonzalez |  |
| 57 | 1.28 | (E) Póster Versión A3 aprobado | milestone | 0d | 2023-08-14 | 2023-08-14 | 49 | 70.5d |  |  | Gabriel Iakantas; Lourdes Gonzalez |  |
| 58 | 1.29 | (E) Documento de Arquitectura aprobado | milestone | 0d | 2023-06-07 | 2023-06-07 | 50 | 118.5d |  |  | Chiara Mazzarella; Marisol Cervantes; Gabriel Iakantas; Jhon Olmedo |  |
| 59 | 1.30 | (E) Prototipo de interfaces de usuario aprobado | milestone | 0d | 2023-06-13 | 2023-06-13 | 51 | 114.75d |  |  | Chiara Mazzarella; Marisol Cervantes; Lourdes Gonzalez; Jhon Olmedo; Gabriel Iakantas |  |
| 60 | 1.31 | (E) Informe de Avances aprobado | milestone | 0d | 2023-06-16 | 2023-06-16 | 52 | 111.75d |  |  | Chiara Mazzarella; Marisol Cervantes; Lourdes Gonzalez; Jhon Olmedo; Gabriel Iakantas |  |

| ID | WBS | Task | Duration | Start | Finish | Predecessors | Total slack | Resources | Work |
| --- | --- | --- | --- | --- | --- | --- | --- | --- | --- |
| 61 | 1.32 | **Fase 3 (Desarrollo)** | 108.5d | 2023-06-13 | 2023-11-13 |  | 0d |  | 2796h |
| 62 | 1.32.1 | **Release 1** | 51.25d | 2023-06-13 | 2023-08-23 |  | 0d |  | 1326h |
| 63 | 1.32.1.1 | **Sprint 1 (Registro de tipos de cultivos, plantaciones y trabajadores)** | 25.62d | 2023-06-13 | 2023-07-19 |  | 0d |  | 663h |
| 64 | 1.32.1.1.1 | Revisar Product Backlog | 12h | 2023-06-13 | 2023-06-15 | 34, 35, 50, 51 | 0d | Gabriel Iakantas; Marisol Cervantes | 24h |
| 65 | 1.32.1.1.2 | Elaborar Sprint Backlog (Sprint Planning) | 18h | 2023-06-15 | 2023-06-19 | 64 | 0d | Chiara Mazzarella; Marisol Cervantes; Lourdes Gonzalez; Jhon Olmedo; Gabriel Iakantas | 90h |
| 66 | 1.32.1.1.3 | Elaborarar Código del Sprint | 115h | 2023-06-19 | 2023-07-07 | 65 | 0d | Chiara Mazzarella; Marisol Cervantes; Jhon Olmedo | 345h |
| 67 | 1.32.1.1.4 | Realizar Sprint Review con Stakeholders | 24h | 2023-07-07 | 2023-07-12 | 66 | 0d | Gabriel Iakantas; Lourdes Gonzalez; Marisol Cervantes | 72h |
| 68 | 1.32.1.1.5 | Realizar Sprint Retrospective | 12h | 2023-07-12 | 2023-07-14 | 67 | 0d | Marisol Cervantes; Gabriel Iakantas; Lourdes Gonzalez | 36h |
| 69 | 1.32.1.1.6 | Realizar Resumen del Sprint 1, Release 1 | 24h | 2023-07-14 | 2023-07-19 | 68 | 0d | Chiara Mazzarella; Gabriel Iakantas; Jhon Olmedo; Marisol Cervantes | 96h |
| 70 | 1.32.1.2 | **Sprint 2 (Registro de ventas, compras y préstamos)** | 25.62d | 2023-07-19 | 2023-08-23 |  | 0d |  | 663h |
| 71 | 1.32.1.2.1 | Revisar Product Backlog | 12h | 2023-07-19 | 2023-07-20 | 69 | 0d | Gabriel Iakantas; Marisol Cervantes | 24h |
| 72 | 1.32.1.2.2 | Elaborar Sprint Backlog (Sprint Planning) | 18h | 2023-07-20 | 2023-07-25 | 71 | 0d | Chiara Mazzarella; Marisol Cervantes; Lourdes Gonzalez; Jhon Olmedo; Gabriel Iakantas | 90h |
| 73 | 1.32.1.2.3 | Elaborarar Código del Sprint | 115h | 2023-07-25 | 2023-08-14 | 72 | 0d | Chiara Mazzarella; Marisol Cervantes; Jhon Olmedo | 345h |
| 74 | 1.32.1.2.4 | Realizar Sprint Review con Stakeholders | 24h | 2023-08-14 | 2023-08-17 | 73 | 0d | Gabriel Iakantas; Lourdes Gonzalez; Marisol Cervantes | 72h |
| 75 | 1.32.1.2.5 | Realizar Sprint Retrospective | 12h | 2023-08-17 | 2023-08-18 | 74 | 0d | Marisol Cervantes; Gabriel Iakantas; Lourdes Gonzalez | 36h |
| 76 | 1.32.1.2.6 | Realizar Resumen del Sprint 2, Release 1 | 24h | 2023-08-21 | 2023-08-23 | 75 | 0d | Chiara Mazzarella; Gabriel Iakantas; Jhon Olmedo; Marisol Cervantes | 96h |
| 77 | 1.32.2 | **Release 2** | 57.25d | 2023-08-24 | 2023-11-13 |  | 0d |  | 1470h |
| 78 | 1.32.2.1 | **Sprint 1 (Visualización del resumen de caja y elementos del almacén. Registro y autenticación de los usuarios)** | 25.62d | 2023-08-24 | 2023-09-28 |  | 0d |  | 663h |
| 79 | 1.32.2.1.1 | Revisar Product Backlog | 12h | 2023-08-24 | 2023-08-25 | 76 | 0d | Gabriel Iakantas; Marisol Cervantes | 24h |
| 80 | 1.32.2.1.2 | Elaborar Sprint Backlog (Sprint Planning) | 18h | 2023-08-25 | 2023-08-29 | 79 | 0d | Chiara Mazzarella; Marisol Cervantes; Lourdes Gonzalez; Jhon Olmedo; Gabriel Iakantas | 90h |
| 81 | 1.32.2.1.3 | Elaborarar Código del Sprint | 115h | 2023-08-29 | 2023-09-19 | 80 | 0d | Chiara Mazzarella; Marisol Cervantes; Jhon Olmedo | 345h |
| 82 | 1.32.2.1.4 | Realizar Sprint Review con Stakeholders | 24h | 2023-09-19 | 2023-09-22 | 81 | 0d | Gabriel Iakantas; Lourdes Gonzalez; Marisol Cervantes | 72h |
| 83 | 1.32.2.1.5 | Realizar Sprint Retrospective | 12h | 2023-09-22 | 2023-09-25 | 82 | 0d | Marisol Cervantes; Gabriel Iakantas; Lourdes Gonzalez | 36h |
| 84 | 1.32.2.1.6 | Realizar Resumen del Sprint 1, Release 2 | 24h | 2023-09-25 | 2023-09-28 | 83 | 0d | Chiara Mazzarella; Gabriel Iakantas; Jhon Olmedo; Marisol Cervantes | 96h |

| ID | WBS | Task | Type | Duration | Start | Finish | Predecessors | Total slack | Free slack | Resources | Work |
| --- | --- | --- | --- | --- | --- | --- | --- | --- | --- | --- | --- |
| 85 | 1.32.2.2 | **Sprint 2 (Gestión de los elementos del almacén y de las tareas)** |  | 31.62d | 2023-09-28 | 2023-11-13 |  | 0d |  |  | 807h |
| 86 | 1.32.2.2.1 | Revisar Product Backlog |  | 12h | 2023-09-28 | 2023-10-02 | 84 | 0d |  | Gabriel Iakantas; Marisol Cervantes | 24h |
| 87 | 1.32.2.2.2 | Elaborar Sprint Backlog (Sprint Planning) |  | 18h | 2023-10-02 | 2023-10-04 | 86 | 0d |  | Chiara Mazzarella; Marisol Cervantes; Lourdes Gonzalez; Jhon Olmedo; Gabriel Iakantas | 90h |
| 88 | 1.32.2.2.3 | Elaborarar Código del Sprint |  | 163h | 2023-10-04 | 2023-11-01 | 87 | 0d |  | Chiara Mazzarella; Marisol Cervantes; Jhon Olmedo | 489h |
| 89 | 1.32.2.2.4 | Realizar Sprint Review con Stakeholders |  | 24h | 2023-11-01 | 2023-11-06 | 88 | 0d |  | Gabriel Iakantas; Lourdes Gonzalez; Marisol Cervantes | 72h |
| 90 | 1.32.2.2.5 | Realizar Sprint Retrospective |  | 12h | 2023-11-06 | 2023-11-08 | 89 | 0d |  | Marisol Cervantes; Gabriel Iakantas; Lourdes Gonzalez | 36h |
| 91 | 1.32.2.2.6 | Realizar Resumen del Sprint 2, Release 2 |  | 24h | 2023-11-08 | 2023-11-13 | 90 | 0d |  | Chiara Mazzarella; Gabriel Iakantas; Jhon Olmedo; Marisol Cervantes | 96h |
| 92 | 1.32.3 | Elaborar el Informe de avances |  | 24h | 2023-11-08 | 2023-11-13 | 90 | 6.25d | 0d |  |  |
| 93 | 1.33 | (E) Sprint Backlog (Release 1, Sprint 1) aprobado | milestone | 0d | 2023-06-19 | 2023-06-19 | 65 | 111d |  | Marisol Cervantes; Jhon Olmedo; Gabriel Iakantas; Chiara Mazzarella; Lourdes Gonzalez |  |
| 94 | 1.34 | (E) Sprint Backlog (Release 1, Sprint 2) aprobado | milestone | 0d | 2023-07-25 | 2023-07-25 | 72 | 85.38d |  | Marisol Cervantes; Jhon Olmedo; Gabriel Iakantas; Chiara Mazzarella; Lourdes Gonzalez |  |
| 95 | 1.35 | (E) Sprint Backlog (Release 2, Sprint 1) aprobado | milestone | 0d | 2023-08-29 | 2023-08-29 | 80 | 59.75d |  | Marisol Cervantes; Jhon Olmedo; Gabriel Iakantas; Chiara Mazzarella; Lourdes Gonzalez |  |
| 96 | 1.36 | (E) Sprint Backlog (Release 2, Sprint 2) aprobado | milestone | 0d | 2023-10-04 | 2023-10-04 | 87 | 34.12d |  | Marisol Cervantes; Jhon Olmedo; Gabriel Iakantas; Chiara Mazzarella; Lourdes Gonzalez |  |
| 97 | 1.37 | (E) Informe de Avances aprobado | milestone | 0d | 2023-11-13 | 2023-11-13 | 92 | 6.25d |  | Marisol Cervantes; Jhon Olmedo; Gabriel Iakantas; Chiara Mazzarella; Lourdes Gonzalez |  |
| 98 | 1.38 | (E) Resumen del Sprint 1 - Release 1 aprobado | milestone | 0d | 2023-07-19 | 2023-07-19 | 69 | 89.12d |  | Chiara Mazzarella; Gabriel Iakantas; Marisol Cervantes; Jhon Olmedo |  |
| 99 | 1.39 | (E) Resumen del Sprint 2 - Release 1 aprobado | milestone | 0d | 2023-08-23 | 2023-08-23 | 76 | 63.5d |  | Chiara Mazzarella; Gabriel Iakantas; Marisol Cervantes; Jhon Olmedo |  |
| 100 | 1.40 | (E) Resumen del Sprint 1 - Release 2 aprobado | milestone | 0d | 2023-09-28 | 2023-09-28 | 84 | 37.88d |  | Chiara Mazzarella; Gabriel Iakantas; Marisol Cervantes; Jhon Olmedo |  |
| 101 | 1.41 | (E) Resumen del Sprint 2 - Release 2 aprobado | milestone | 0d | 2023-11-13 | 2023-11-13 | 91 | 6.25d |  | Chiara Mazzarella; Gabriel Iakantas; Marisol Cervantes; Jhon Olmedo |  |
| 102 | 1.42 | **Fase 4 (Implementación)** |  | 6.25d | 2023-11-13 | 2023-11-21 |  | 0d |  |  | 250h |
| 103 | 1.42.1 | Realizar el Manual de Usuario |  | 32h | 2023-11-13 | 2023-11-17 | 69, 76, 84, 91 | 0d |  | Marisol Cervantes; Lourdes Gonzalez; Chiara Mazzarella; Gabriel Iakantas; Jhon Olmedo | 160h |
| 104 | 1.42.2 | Elaborar el Informe de Avances |  | 18h | 2023-11-17 | 2023-11-21 | 103 | 0d |  | Jhon Olmedo; Chiara Mazzarella; Marisol Cervantes; Gabriel Iakantas; Lourdes Gonzalez | 90h |
| 105 | 1.43 | (E) Manual de Usuario Aprobado | milestone | 0d | 2023-11-17 | 2023-11-17 | 103 | 2.25d |  | Marisol Cervantes; Lourdes Gonzalez; Chiara Mazzarella; Gabriel Iakantas; Jhon Olmedo |  |
| 106 | 1.44 | (E) Informe de Avances aprobado | milestone | 0d | 2023-11-21 | 2023-11-21 | 104 | 0d |  | Jhon Olmedo; Chiara Mazzarella; Marisol Cervantes; Gabriel Iakantas; Lourdes Gonzalez |  |
| 107 | 1.45 | (E) Sistema de Gestión para Pequeños Productores Agrícolas implementado | milestone | 0d | 2023-11-13 | 2023-11-13 | 91 | 6.25d |  | Jhon Olmedo; Chiara Mazzarella; Marisol Cervantes; Gabriel Iakantas; Lourdes Gonzalez |  |
| 108 | 1.46 | **Fase 5 (Cierre)** |  | 1.5d | 2023-11-17 | 2023-11-20 |  | 0.75d |  |  | 60h |
| 109 | 1.46.1 | Elaborar lecciones aprendidas y cierre del proyecto. |  | 12h | 2023-11-17 | 2023-11-20 | 103 | 0.75d | 0d | Lourdes Gonzalez; Jhon Olmedo; Marisol Cervantes; Chiara Mazzarella; Gabriel Iakantas | 60h |
| 110 | 1.47 | (E) Lecciones Aprendidas y Cierre del Proyecto aprobado. | milestone | 0d | 2023-11-20 | 2023-11-20 | 109 | 0.75d |  | Lourdes Gonzalez; Jhon Olmedo; Marisol Cervantes; Chiara Mazzarella; Gabriel Iakantas |  |

| ID | WBS | Task | Type | Duration | Start | Finish | Predecessors | Total slack | Free slack | Constraint | Resources | Work |
| --- | --- | --- | --- | --- | --- | --- | --- | --- | --- | --- | --- | --- |
| 111 | 1.48 | **Fase 6 (Evaluación)** |  | 91d | 2023-06-16 | 2023-10-20 |  | 21.5d |  |  |  | 160h |
| 112 | 1.48.1 | Elaboración del Tablero de Control 1 |  | 8h | 2023-06-16 | 2023-06-16 |  | 111.5d | 0d | start no earlier than 2023-06-16 | Lourdes Gonzalez; Jhon Olmedo; Marisol Cervantes; Chiara Mazzarella; Gabriel Iakantas | 40h |
| 113 | 1.48.2 | Elaboración del Tablero de Control 2 |  | 8h | 2023-08-04 | 2023-08-04 |  | 76.5d | 0d | start no earlier than 2023-08-04 | Lourdes Gonzalez; Jhon Olmedo; Marisol Cervantes; Chiara Mazzarella; Gabriel Iakantas | 40h |
| 114 | 1.48.3 | Elaboración del Tablero de Control 3 |  | 8h | 2023-09-29 | 2023-09-29 |  | 36.5d | 0d | start no earlier than 2023-09-29 | Lourdes Gonzalez; Jhon Olmedo; Marisol Cervantes; Chiara Mazzarella; Gabriel Iakantas | 40h |
| 115 | 1.48.4 | Elaboración del Trablero de Control 4 |  | 8h | 2023-10-20 | 2023-10-20 |  | 21.5d | 0d | start no earlier than 2023-10-20 | Lourdes Gonzalez; Jhon Olmedo; Marisol Cervantes; Chiara Mazzarella; Gabriel Iakantas | 40h |
| 116 | 1.49 | (E) Tablero de Control 1 aprobado | milestone | 0d | 2023-06-16 | 2023-06-16 | 112 | 111.5d |  |  | Lourdes Gonzalez; Marisol Cervantes; Gabriel Iakantas; Chiara Mazzarella; Jhon Olmedo |  |
| 117 | 1.50 | (E) Tablero de Control 2 aprobado | milestone | 0d | 2023-08-04 | 2023-08-04 | 113 | 76.5d |  |  | Gabriel Iakantas; Marisol Cervantes; Chiara Mazzarella; Jhon Olmedo; Lourdes Gonzalez |  |
| 118 | 1.51 | (E) Tablero de Control 3 aprobado | milestone | 0d | 2023-09-29 | 2023-09-29 | 114 | 36.5d |  |  | Chiara Mazzarella; Gabriel Iakantas; Jhon Olmedo; Lourdes Gonzalez; Marisol Cervantes |  |
| 119 | 1.52 | (E) Tablero de Control 4 aprobado | milestone | 0d | 2023-10-20 | 2023-10-20 | 115 | 21.5d |  |  | Chiara Mazzarella; Gabriel Iakantas; Jhon Olmedo; Lourdes Gonzalez; Marisol Cervantes |  |
